# Gantt EPSA

Schedule from GanttProject, 2019-06-27 to 2020-09-30, baseline: 15_05_2019.
EPSA

## Calendars

- Project calendar: Mon-Sun working.

## Resources

| Resource |
| --- |
| MJT |
| ARZ |
| TLS |
| PTN |
| CMI |
| NGO |
| MRI |
| ACO |
| TMN |
| PTS |
| TCN |
| ASE |
| VBU |
| CAD |
| MKI |
| MSO |
| PAX |
| EPZ |
| SGX |
| JMN |
| CLS |
| RMN |
| BMA |

## Schedule

| ID | WBS | Task | Type | Duration | Start | Finish | Predecessors | Baseline start | Baseline finish | Baseline duration | Resources |
| --- | --- | --- | --- | --- | --- | --- | --- | --- | --- | --- | --- |
| 1 | 1 | **Tops** |  | 363d | 2019-06-27 | 2020-06-23 |  | 2019-04-03 | 2020-02-16 | 320d |  |
| 2 | 1.1 | Top Appro | milestone | 0d | 2019-06-27 | 2019-06-27 |  | 2019-06-27 | 2019-06-27 | 0d |  |
| 3 | 1.2 | Top Saison | milestone | 0d | 2019-09-30 | 2019-09-30 |  | 2019-09-30 | 2019-09-30 | 0d |  |
| 4 | 1.3 | Top Synthèse | milestone | 0d | 2019-10-16 | 2019-10-16 |  | 2019-10-02 | 2019-10-02 | 0d |  |
| 5 | 1.4 | Top Copeau 1 | milestone | 0d | 2019-11-13 | 2019-11-13 |  | 2019-11-06 | 2019-11-06 | 0d |  |
| 6 | 1.5 | Top Copeau 2 | milestone | 0d | 2019-11-20 | 2019-11-20 |  | 2019-11-20 | 2019-11-20 | 0d |  |
| 7 | 1.6 | Top Organe | milestone | 0d | 2020-02-05 | 2020-02-05 |  | 2020-02-05 | 2020-02-05 | 0d |  |
| 8 | 1.7 | Top Véhicule | milestone | 0d | 2020-02-19 | 2020-02-19 |  | 2020-02-19 | 2020-02-19 | 0d |  |
| 9 | 1.8 | Top Moteur | milestone | 0d | 2020-03-04 | 2020-03-04 |  | 2020-03-04 | 2020-03-04 | 0d |  |
| 10 | 1.9 | Top Qualif | milestone | 0d | 2020-03-17 | 2020-03-17 |  | 2020-03-17 | 2020-03-17 | 0d |  |
| 11 | 1.10 | Top Compet | milestone | 0d | 2020-06-24 | 2020-06-24 |  | 2020-06-24 | 2020-06-24 | 0d |  |
| 12 | 2 | **Vacances** |  | 341d | 2019-10-26 | 2020-09-30 |  |  |  |  |  |
| 13 | 2.1 | **Vacances ECL** |  | 127d | 2019-10-26 | 2020-02-29 |  |  |  |  |  |
| 14 | 2.1.1 | Toussaint |  | 9d | 2019-10-26 | 2019-11-03 |  |  |  |  |  |
| 15 | 2.1.2 | Noel |  | 16d | 2019-12-21 | 2020-01-05 |  |  |  |  |  |
| 16 | 2.1.3 | Hivers |  | 1d | 2020-02-29 | 2020-02-29 |  |  |  |  |  |
| 17 | 2.2 | **Vacances partenaires** |  | 341d | 2019-10-26 | 2020-09-30 |  |  |  |  |  |
| 18 | 2.2.1 | **Giraudière** |  | 72d | 2019-10-26 | 2020-01-05 |  |  |  |  |  |
| 19 | 2.2.1.1 | Toussaint |  | 9d | 2019-10-26 | 2019-11-03 |  |  |  |  |  |
| 20 | 2.2.1.2 | Noel |  | 16d | 2019-12-21 | 2020-01-05 |  |  |  |  |  |
| 21 | 2.2.2 | Boisard |  | 99d | 2020-06-24 | 2020-09-30 |  |  |  |  |  |
| 22 | 3 | **Global** |  | 363d | 2019-06-27 | 2020-06-23 |  |  |  |  |  |
| 23 | 3.1 | Livrables |  | 363d | 2019-06-27 | 2020-06-23 | 2, 11FF | 2019-05-08 | 2019-05-27 | 20d |  |
| 24 | 3.2 | Carnet de conception |  | 51d | 2019-08-01 | 2019-09-20 |  |  |  |  | TLS |
| 25 | 3.3 | Nomenclature |  | 51d | 2019-08-01 | 2019-09-20 |  |  |  |  | TLS |

| ID | WBS | Task | Duration | Start | Finish | Predecessors | Complete | Baseline start | Baseline finish | Baseline duration | Resources |
| --- | --- | --- | --- | --- | --- | --- | --- | --- | --- | --- | --- |
| 26 | 4 | **LAS** | 117d | 2019-08-19 | 2019-12-13 |  | 15% | 2019-05-08 | 2019-05-22 | 15d |  |
| 27 | 4.1 | **Cinématique** | 56d | 2019-08-19 | 2019-10-13 |  | 86% |  |  |  |  |
| 28 | 4.1.1 | Gabarit de châssis | 14d | 2019-09-16 | 2019-09-29 |  | 100% |  |  |  |  |
| 29 | 4.1.2 | Points de LAS avant | 42d | 2019-08-19 | 2019-09-29 |  | 100% |  |  |  | MKI; MSO; PAX |
| 30 | 4.1.3 | Points de LAS arrière | 35d | 2019-08-26 | 2019-09-29 |  | 100% |  |  |  | MKI; MSO; PAX |
| 31 | 4.1.4 | Seconde itération | 14d | 2019-09-30 | 2019-10-13 | 29, 30 |  |  |  |  | MKI; MSO; PAX |
| 32 | 4.2 | **Cas de charge** | 52d | 2019-09-23 | 2019-11-13 |  | 5% |  |  |  |  |
| 33 | 4.2.1 | Paul Clauzel | 3d | 2019-09-23 | 2019-09-25 |  | 100% |  |  |  | MKI |
| 34 | 4.2.2 | Modèle | 11d | 2019-09-26 | 2019-10-06 | 33 |  |  |  |  | MKI |
| 35 | 4.2.3 | Cas de charge | 14d | 2019-10-07 | 2019-10-20 | 34 |  |  |  |  | MKI |
| 36 | 4.2.4 | Vérification | 7d | 2019-10-21 | 2019-10-27 | 35 |  |  |  |  | MKI |
| 37 | 4.2.5 | Itérations | 7d | 2019-10-28 | 2019-11-03 | 36 |  |  |  |  | MKI |
| 38 | 4.2.6 | Fin des cas de charges | 10d | 2019-11-04 | 2019-11-13 | 37 |  |  |  |  | MKI |
| 39 | 4.3 | **Roue équipée** | 117d | 2019-08-19 | 2019-12-13 |  | 12% |  |  |  |  |
| 40 | 4.3.1 | Choix des pneus | 12d | 2019-08-19 | 2019-08-30 | 29SS | 100% |  |  |  | MKI; MSO |
| 41 | 4.3.2 | Architecture | 7d | 2019-10-14 | 2019-10-20 |  |  |  |  |  | MSO |
| 42 | 4.3.3 | Modifications | 7d | 2019-10-14 | 2019-10-20 | 41SS |  |  |  |  | MSO |
| 43 | 4.3.4 | Frette de frein | 7d | 2019-10-21 | 2019-10-27 | 42 |  |  |  |  | MSO |
| 44 | 4.3.5 | Ebauche CATIA | 14d | 2019-10-28 | 2019-11-10 | 43 |  |  |  |  | MSO |
| 45 | 4.3.6 | Retour points de LAS | 14d | 2019-10-28 | 2019-11-10 | 44SS |  |  |  |  | MSO |
| 46 | 4.3.7 | Optimisation | 26d | 2019-11-11 | 2019-12-06 | 44 |  |  |  |  | MSO |
| 47 | 4.3.8 | Fabricabilité | 7d | 2019-12-07 | 2019-12-13 | 46 |  |  |  |  | MSO |
| 48 | 4.4 | **Triangles** | 56d | 2019-10-07 | 2019-12-01 |  |  |  |  |  |  |
| 49 | 4.4.1 | Choix réglage | 7d | 2019-10-07 | 2019-10-13 |  |  |  |  |  | MKI |
| 50 | 4.4.2 | Choix rotules | 7d | 2019-10-14 | 2019-10-20 | 49 |  |  |  |  | MKI |
| 51 | 4.4.3 | Choix entretoises | 7d | 2019-10-14 | 2019-10-20 | 49 |  |  |  |  | MKI |
| 52 | 4.4.4 | Dimensionnement biellettes | 7d | 2019-10-21 | 2019-10-27 | 49, 50 |  |  |  |  | MKI |
| 53 | 4.4.5 | Dimensionnement visserie | 7d | 2019-10-14 | 2019-10-20 | 49 |  |  |  |  | MKI |
| 54 | 4.4.6 | Dimenssionnement des tubes | 7d | 2019-10-21 | 2019-10-27 | 35, 49 |  |  |  |  | MKI |
| 55 | 4.4.7 | Dimensionnement des inserts | 7d | 2019-10-28 | 2019-11-03 | 54 |  |  |  |  | MKI |
| 56 | 4.4.8 | Essais collages | 28d | 2019-11-04 | 2019-12-01 | 55 |  |  |  |  | MKI |

Notes:
- 33: Le contacter pour la licence Mecamaster
- 35: Premiers cas de charges
- 36: A voir avec Paul Clozel
- 42: Recherche des éléments où il faut investir du temps
- 43: Etudier la faisabilité d'un frette combiné au moyeu
- 49: Voir Claude Rouelle : pas différents de chaque côté des biellettes
- 56: Fatigue

| ID | WBS | Task | Duration | Start | Finish | Predecessors | Complete | Baseline start | Baseline finish | Baseline duration | Resources |
| --- | --- | --- | --- | --- | --- | --- | --- | --- | --- | --- | --- |
| 57 | 4.5 | **Suspension** | 21d | 2019-09-30 | 2019-10-20 |  |  |  |  |  |  |
| 58 | 4.5.1 | Basculeurs | 14d | 2019-09-30 | 2019-10-13 |  |  |  |  |  | PAX |
| 59 | 4.5.2 | Pivot | 7d | 2019-10-14 | 2019-10-20 | 58 |  |  |  |  | PAX |
| 60 | 4.6 | **Anti-roulis** | 28d | 2019-09-30 | 2019-10-27 |  |  |  |  |  |  |
| 61 | 4.6.1 | Modèle efforts | 14d | 2019-09-30 | 2019-10-13 |  |  |  |  |  | PAX |
| 62 | 4.6.2 | Dimenssionnement de la barre de torsion | 14d | 2019-10-14 | 2019-10-27 | 61 |  |  |  |  | PAX |
| 63 | 4.6.3 | Couteaux | 14d | 2019-09-30 | 2019-10-13 |  |  |  |  |  | PAX |
| 64 | 4.6.4 | Pivot | 7d | 2019-10-14 | 2019-10-20 | 63 |  |  |  |  | PAX |
| 65 | 4.6.5 | Coussinets | 7d | 2019-10-21 | 2019-10-27 | 64 |  |  |  |  | PAX |
| 66 | 4.7 | **Direction** | 49d | 2019-09-23 | 2019-11-10 |  | 14% |  |  |  | SGX |
| 67 | 4.7.1 | Cinématique | 14d | 2019-09-23 | 2019-10-06 |  | 50% |  |  |  | MKI; SGX |
| 68 | 4.7.2 | Cardan | 14d | 2019-10-07 | 2019-10-20 | 67 |  |  |  |  | SGX |
| 69 | 4.7.3 | Colonne de direction | 7d | 2019-10-21 | 2019-10-27 | 68 |  |  |  |  | SGX |
| 70 | 4.7.4 | Finalisation cinématique | 7d | 2019-10-28 | 2019-11-03 | 29, 69 |  |  |  |  | SGX |
| 71 | 4.7.5 | Pivot et manchon | 7d | 2019-11-04 | 2019-11-10 | 70 |  |  |  |  | SGX |
| 72 | 4.8 | **Freinage** | 56d | 2019-09-23 | 2019-11-17 |  | 9% |  |  |  | EPZ |
| 73 | 4.8.1 | Répartition freinage | 14d | 2019-09-23 | 2019-10-06 |  | 50% |  |  |  |  |
| 74 | 4.8.2 | Dimenssionnement disques | 21d | 2019-10-07 | 2019-10-27 | 73 |  |  |  |  |  |
| 75 | 4.8.3 | Dimenssionnement étrier | 21d | 2019-10-07 | 2019-10-27 | 73 |  |  |  |  |  |
| 76 | 4.8.4 | Durites | 21d | 2019-10-28 | 2019-11-17 | 75 |  |  |  |  |  |
| 77 | 4.9 | **Pédalier** | 49d | 2019-09-16 | 2019-11-03 |  |  |  |  |  |  |
| 78 | 4.9.1 | Accélérateur | 35d | 2019-09-16 | 2019-10-20 |  |  |  |  |  | JMN |
| 79 | 4.9.2 | Frein | 35d | 2019-09-30 | 2019-11-03 |  |  |  |  |  | JMN |
| 80 | 5 | **Frame** | 100d | 2019-08-12 | 2019-11-19 |  | 10% | 2019-05-08 | 2019-05-18 | 11d |  |
| 81 | 5.1 | **Structure tubulaire** | 98d | 2019-08-12 | 2019-11-17 |  | 23% |  |  |  |  |
| 82 | 5.1.1 | Premières esquisses | 28d | 2019-08-12 | 2019-09-08 |  | 100% |  |  |  | CMI |
| 83 | 5.1.2 | Points de LAS | 21d | 2019-09-09 | 2019-09-29 | 82 | 30% |  |  |  | CMI |
| 84 | 5.1.3 | Moteur - Echappement | 21d | 2019-09-09 | 2019-09-29 | 82 |  |  |  |  | CMI |
| 85 | 5.1.4 | Finalisation filaire | 14d | 2019-09-16 | 2019-09-29 |  |  |  |  |  | CMI |
| 86 | 5.1.5 | Seconde itération | 14d | 2019-09-30 | 2019-10-13 | 83, 84, 85 |  |  |  |  | CMI |
| 87 | 5.1.6 | Vérif règlement | 7d | 2019-10-14 | 2019-10-20 | 86 |  |  |  |  | CMI |
| 88 | 5.1.7 | Raideur en torsions | 14d | 2019-10-14 | 2019-10-27 |  |  |  |  |  | CMI |
| 89 | 5.1.8 | Autres cas de charge | 14d | 2019-10-21 | 2019-11-03 |  |  |  |  |  | CMI |
| 90 | 5.1.9 | Vérif règlement | 14d | 2019-11-04 | 2019-11-17 | 88, 89 |  |  |  |  | CMI |
| 91 | 5.2 | Ergonomie | 49d | 2019-09-30 | 2019-11-17 | 90FF |  |  |  |  | CMI |

Notes:
- 61: Pour la démarche
- 62: Pour la démarche
- 63: Pour la démarche
- 64: Pour la démarche
- 65: Pour la démarche
- 72: En collaboration avec la roue équipée et le pédalier

| ID | WBS | Task | Duration | Start | Finish | Predecessors | Complete | Resources |
| --- | --- | --- | --- | --- | --- | --- | --- | --- |
| 92 | 5.3 | **Equipements** | 58d | 2019-09-23 | 2019-11-19 |  |  |  |
| 93 | 5.3.1 | Suivi des chappes | 58d | 2019-09-23 | 2019-11-19 | 6FF |  | TLS |
| 94 | 5.3.2 | Anti-intrusion plate | 35d | 2019-10-14 | 2019-11-17 | 86 |  | CMI |
| 95 | 5.3.3 | Pare-feu | 35d | 2019-10-14 | 2019-11-17 | 86 |  | CMI |
| 96 | 5.3.4 | Fond plat | 35d | 2019-10-14 | 2019-11-17 | 86 |  | PTS |
| 97 | 6 | **Aéro** | 91d | 2019-08-19 | 2019-11-17 |  | 19% |  |
| 98 | 6.1 | **Fabrication** | 40d | 2019-09-04 | 2019-10-13 |  | 57% |  |
| 99 | 6.1.1 | **Démarchage** | 40d | 2019-09-04 | 2019-10-13 |  | 57% |  |
| 100 | 6.1.1.1 | Rédaction du mail | 7d | 2019-09-04 | 2019-09-10 |  | 100% | ACO |
| 101 | 6.1.1.2 | Recherche de contacts | 40d | 2019-09-04 | 2019-10-13 |  | 50% | ACO |
| 102 | 6.2 | **Méthode numérique** | 35d | 2019-08-19 | 2019-09-22 |  |  |  |
| 103 | 6.2.1 | Simulation mécanique | 35d | 2019-08-19 | 2019-09-22 |  |  | NGO |
| 104 | 6.3 | **Carrosserie** | 63d | 2019-09-16 | 2019-11-17 |  | 22% |  |
| 105 | 6.3.1 | REX et étude concurrence | 14d | 2019-09-16 | 2019-09-29 |  | 100% | PTS |
| 106 | 6.3.2 | Premier version | 14d | 2019-09-30 | 2019-10-13 | 85, 105 |  | PTS |
| 107 | 6.3.3 | Optimisation aéro | 14d | 2019-10-14 | 2019-10-27 | 106 |  | PTS |
| 108 | 6.3.4 | Seconde itération | 7d | 2019-10-28 | 2019-11-03 | 86, 107 |  | PTS |
| 109 | 6.3.5 | Fixation aéro | 14d | 2019-11-04 | 2019-11-17 | 108 |  | PTS |
| 110 | 6.4 | **Ailes** | 57d | 2019-09-09 | 2019-11-04 |  | 12% |  |
| 111 | 6.4.1 | Étude aéro arrière | 28d | 2019-09-09 | 2019-10-06 |  | 50% | MRI; ACO |
| 112 | 6.4.2 | Étude aéro avant | 36d | 2019-09-30 | 2019-11-04 |  |  | MRI; ACO |
| 113 | 6.4.3 | Volume enveloppe | 7d | 2019-09-30 | 2019-10-06 |  |  |  |
| 114 | 6.4.4 | Cas de charges des ailes | 7d | 2019-09-30 | 2019-10-06 |  |  |  |
| 115 | 6.4.5 | Structure interne | 21d | 2019-10-07 | 2019-10-27 | 114 |  |  |
| 116 | 6.4.6 | Méthode d'attache arrière | 14d | 2019-10-07 | 2019-10-20 | 114 |  | TCN |

Notes:
- 115: Pour dimenssionnement / Raideur du tube / Puis nombre de nervure
- 116: Etude concurrence / Soltuion légère et réglable

| ID | WBS | Task | Duration | Start | Finish | Predecessors | Complete | Baseline start | Baseline finish | Baseline duration | Resources |
| --- | --- | --- | --- | --- | --- | --- | --- | --- | --- | --- | --- |
| 117 | 6.5 | **Ouies** | 14d | 2019-09-30 | 2019-10-13 |  |  |  |  |  |  |
| 118 | 6.5.1 | Concept ouies | 14d | 2019-09-30 | 2019-10-13 |  |  |  |  |  |  |
| 119 | 6.6 | **Diffuseur** | 14d | 2019-09-30 | 2019-10-13 |  |  |  |  |  |  |
| 120 | 6.6.1 | Concept aéro | 14d | 2019-09-30 | 2019-10-13 |  |  |  |  |  | MRI; ACO |
| 121 | 7 | **Motorisation** | 51d | 2019-09-30 | 2019-11-19 |  | 8% | 2019-05-06 | 2019-05-20 | 15d |  |
| 122 | 7.1 | **Bride guillotine** | 14d | 2019-09-30 | 2019-10-13 |  |  |  |  |  |  |
| 123 | 7.1.1 | Analyser le diaphragme | 14d | 2019-09-30 | 2019-10-13 |  |  |  |  |  | CAD |
| 124 | 7.1.2 | CdCF bride guillotine | 7d | 2019-09-30 | 2019-10-06 |  |  |  |  |  | CAD |
| 125 | 7.1.3 | Choisir l'architecture | 7d | 2019-10-07 | 2019-10-13 |  |  |  |  |  | CAD |
| 126 | 7.2 | **Admission** | 14d | 2019-09-30 | 2019-10-13 |  |  |  |  |  |  |
| 127 | 7.2.1 | Longueur des tubulures | 7d | 2019-09-30 | 2019-10-06 |  |  |  |  |  | TLS |
| 128 | 7.2.2 | Contacter Michele Salvia | 7d | 2019-09-30 | 2019-10-06 |  |  |  |  |  | TLS |
| 129 | 7.2.3 | Choix matériau | 7d | 2019-10-07 | 2019-10-13 | 128 |  |  |  |  | TLS |
| 130 | 7.2.4 | Début du CATIA de l'admission | 7d | 2019-09-30 | 2019-10-06 |  |  |  |  |  | TLS |
| 131 | 7.2.5 | CatPart v1 | 7d | 2019-10-07 | 2019-10-13 | 130 |  |  |  |  | TLS |
| 132 | 7.3 | **Echappement** | 14d | 2019-09-30 | 2019-10-13 |  |  |  |  |  |  |
| 133 | 7.3.1 | Démarcher des partenaire | 7d | 2019-09-30 | 2019-10-06 |  |  |  |  |  | ASE |
| 134 | 7.3.2 | Trouver le diamètre Yoshimura | 7d | 2019-09-30 | 2019-10-06 |  |  |  |  |  | ASE |
| 135 | 7.3.3 | Récupération de celui d'Optimus?? | 14d | 2019-09-30 | 2019-10-13 |  |  |  |  |  | MJT |
| 136 | 7.4 | **Carto** | 7d | 2019-11-13 | 2019-11-19 |  |  |  |  |  |  |
| 137 | 7.4.1 | Prevoir passage au banc de Givors | 7d | 2019-11-13 | 2019-11-19 | 5 |  |  |  |  | MJT |
| 138 | 7.5 | **Refroidissement** | 14d | 2019-09-30 | 2019-10-13 |  | 50% |  |  |  |  |
| 139 | 7.5.1 | Terminer le choix ouies, radiateur | 7d | 2019-09-30 | 2019-10-06 |  | 100% |  |  |  | ASE |
| 140 | 7.5.2 | Etude refroidissement | 7d | 2019-10-07 | 2019-10-13 |  |  |  |  |  | ASE |

Notes:
- 123: Attention au pb de capteur
- 140: Avec deux radiateurs découplables?

| ID | WBS | Task | Duration | Start | Finish | Predecessors | Complete | Baseline start | Baseline finish | Baseline duration | Resources |
| --- | --- | --- | --- | --- | --- | --- | --- | --- | --- | --- | --- |
| 141 | 7.6 | **Circuit d'essence** | 7d | 2019-10-07 | 2019-10-13 |  |  |  |  |  |  |
| 142 | 7.6.1 | Commande rle tube de remplissage | 7d | 2019-10-07 | 2019-10-13 |  |  |  |  |  | ASE |
| 143 | 7.6.2 | Circuit d'essence | 7d | 2019-10-07 | 2019-10-13 |  |  |  |  |  | ASE |
| 144 | 7.7 | **Transmission secondaire** | 14d | 2019-09-30 | 2019-10-13 |  |  |  |  |  |  |
| 145 | 7.7.1 | Analyser le déplacement des axes | 7d | 2019-09-30 | 2019-10-06 |  |  |  |  |  | VBU |
| 146 | 7.7.2 | Préssenter les cas de charges | 7d | 2019-09-30 | 2019-10-06 |  |  |  |  |  | VBU |
| 147 | 7.7.3 | CdCF quantifié du système | 7d | 2019-09-30 | 2019-10-06 |  |  |  |  |  | VBU |
| 148 | 7.7.4 | Efforts subis par les axes de transmission | 7d | 2019-10-07 | 2019-10-13 |  |  |  |  |  | VBU |
| 149 | 8 | **SEISM** | 84d | 2019-09-02 | 2019-11-24 |  | 19% | 2019-05-10 | 2019-05-14 | 5d |  |
| 150 | 8.1 | **Faisceau** | 84d | 2019-09-02 | 2019-11-24 |  | 31% |  |  |  |  |
| 151 | 8.1.1 | Architecture faisceau | 14d | 2019-09-02 | 2019-09-15 |  | 100% |  |  |  | CLS |
| 152 | 8.1.2 | Schema faisceau | 28d | 2019-09-16 | 2019-10-13 | 151 | 100% |  |  |  | CLS |
| 153 | 8.1.3 | Batterie | 14d | 2019-09-30 | 2019-10-13 |  |  |  |  |  | CLS |
| 154 | 8.1.4 | Dimensionnement câble | 14d | 2019-10-07 | 2019-10-20 |  |  |  |  |  | CLS |
| 155 | 8.1.5 | Placer les boîtes | 14d | 2019-10-14 | 2019-10-27 |  |  |  |  |  | CLS |
| 156 | 8.1.6 | Contacter Souriaux | 7d | 2019-09-16 | 2019-09-22 |  |  |  |  |  | CLS |
| 157 | 8.1.7 | Choix connecteur | 14d | 2019-10-14 | 2019-10-27 | 156 |  |  |  |  | CLS |
| 158 | 8.1.8 | Modèle CATIA | 28d | 2019-10-28 | 2019-11-24 | 155, 157 |  |  |  |  | CLS |
| 159 | 8.2 | **Passage de rapport** | 70d | 2019-09-02 | 2019-11-10 |  | 5% |  |  |  |  |
| 160 | 8.2.1 | Dimensionnement moteur | 28d | 2019-09-02 | 2019-09-29 |  | 10% |  |  |  | BMA |
| 161 | 8.2.2 | Dimensionnement réducteur | 28d | 2019-09-02 | 2019-09-29 |  | 10% |  |  |  | BMA |
| 162 | 8.2.3 | Reprendre le code | 28d | 2019-09-30 | 2019-10-27 | 160, 161 |  |  |  |  | BMA |
| 163 | 8.2.4 | Shield | 28d | 2019-10-14 | 2019-11-10 |  |  |  |  |  | BMA |

Notes:
- 144: Ressources: / ASE et une recrue semble correct et moins risqué que deux recrues. / Une des recrues sera donc affecté au circuit d'essence.
- 152: HV / LV / Acquisition de données
- 161: Choisir entre Atomix et Optimus
- 163: Inclure la connection CAN
